# Cloud-based Analytical System

Schedule from MS Project, 2020-11-03 to 2021-07-01, costs in $, A marks actual dates.

## Calendars

- Standard: Mon-Fri 08:00-12:00, 13:00-17:00; Sat-Sun off. Exceptions (off unless hours are given): 2020-12-23 to 2021-01-02 (Christmas Holidays).

## Resources

| Resource | Rate | Cost per use |
| --- | --- | --- |
| Project Manager | 300 |  |
| Senior AWS Network Analyst | 200 |  |
| Senior AWS Cloud Architect | 200 |  |
| AWS Big Data Analyst | 80 |  |
| SysOps Administrator | 80 |  |
| Management | 450 |  |
| Software Cloud |  | 25000 |
| Software Big Data |  | 90000 |
| Software Project Management |  | 40000 |
| Software Email |  | 30000 |
| Hardware |  | 80000 |
| Air Travel |  | 40000 |
| Meals |  | 30000 |

## Schedule

| ID | WBS | Task | Type | Duration | Start | Finish | Predecessors | Complete | Remaining | Baseline start | Baseline finish | Baseline duration | Total slack | Resources | Work | Actual work | Cost | Baseline cost | Actual cost |
| --- | --- | --- | --- | --- | --- | --- | --- | --- | --- | --- | --- | --- | --- | --- | --- | --- | --- | --- | --- |
| 1 | 1 | **Scope** |  | 3d | 2020-11-03 A | 2020-11-05 A |  | 100% |  | 2020-11-03 | 2020-11-05 | 3d |  |  | 48h | 48h | 60,400 | 61,400 | 60,400 |
| 2 | 1.1 | Determine Scope of the Project | manual | 1d | 2020-11-03 A | 2020-11-03 A |  | 100% |  | 2020-11-03 | 2020-11-03 | 1d |  | Project Manager; Management; Air Travel | 24h | 24h | 51,000 | 51,000 | 51,000 |
| 3 | 1.2 | Secure funding | manual | 2d | 2020-11-04 A | 2020-11-05 A | 2 | 100% |  | 2020-11-04 | 2020-11-05 | 2d |  | Project Manager; Management | 24h | 24h | 9,400 | 10,400 | 9,400 |
| 4 | 2 | **Requirements Gathering/Analysis** |  | 24d | 2020-11-09 A | 2020-12-10 |  | 38% | 15d | 2020-11-09 | 2020-12-10 | 24d | 0d |  | 272h | 72h | 74,240 | 74,240 | 29,600 |
| 5 | 2.1 | Perform Needs Analysis | manual | 5d | 2020-11-09 A | 2020-11-13 A |  | 100% |  | 2020-11-09 | 2020-11-13 | 5d |  | AWS Big Data Analyst; Senior AWS Cloud Architect | 40h | 40h | 3,200 | 3,200 | 3,200 |
| 6 | 2.2 | Prepare preliminary specifications for the platform | manual | 4d | 2020-11-16 A | 2020-11-19 A | 5 | 100% |  | 2020-11-16 | 2020-11-19 | 4d |  | Senior AWS Cloud Architect; Senior AWS Network Analyst | 32h | 32h | 26,400 | 26,400 | 26,400 |
| 7 | 2.3 | Prepare Initial Budget | manual | 3d | 2020-11-20 | 2020-11-24 | 6 |  |  | 2020-11-20 | 2020-11-24 | 3d |  | Project Manager | 24h |  | 7,200 | 7,200 |  |
| 8 | 2.4 | Review preliminary specification, and budget with project team and client | manual | 1d | 2020-11-25 | 2020-11-25 | 7 |  |  | 2020-11-25 | 2020-11-25 | 1d |  | Project Manager | 8h |  | 2,400 | 2,400 |  |
| 9 | 2.5 | Integrate feedback received into the specification | manual | 2d | 2020-11-26 | 2020-11-27 | 8 |  |  | 2020-11-26 | 2020-11-27 | 2d |  | AWS Big Data Analyst; Senior AWS Cloud Architect | 32h |  | 4,480 | 4,480 |  |
| 10 | 2.6 | Develop project timeline | manual | 2d | 2020-11-30 | 2020-12-01 | 9 |  |  | 2020-11-30 | 2020-12-01 | 2d |  | Project Manager; AWS Big Data Analyst; Senior AWS Cloud Architect; Senior AWS Network Analyst; SysOps Administrator | 80h |  | 13,760 | 13,760 |  |
| 11 | 2.7 | Secure approval for timeline, budget, and concept | manual | 1d | 2020-12-02 | 2020-12-02 | 10 |  |  | 2020-12-02 | 2020-12-02 | 1d |  | Project Manager | 8h |  | 2,400 | 2,400 |  |
| 12 | 2.8 | Define Resources | manual | 1d | 2020-12-03 | 2020-12-03 | 11 |  |  | 2020-12-03 | 2020-12-03 | 1d |  | Project Manager | 8h |  | 2,400 | 2,400 |  |
| 13 | 2.9 | Secure needed resources | manual | 5d | 2020-12-04 | 2020-12-10 | 12 |  |  | 2020-12-04 | 2020-12-10 | 5d |  | Project Manager | 40h |  | 12,000 | 12,000 |  |
| 14 | 2.10 | Requirements Gathering/Analysis Complete | milestone, manual | 0d | 2020-12-09 | 2020-12-09 |  |  |  | 2020-12-09 | 2020-12-09 | 0d |  |  |  |  |  |  |  |
| 15 | 3 | **System Planning & Design** |  | 29d | 2020-12-10 A | 2021-01-29 |  | 10% | 26.1d | 2020-12-10 | 2021-01-29 | 29d | 0d | Hardware; Software Cloud; Software Email; Software Project Management | 1480h | 116h | 265,080 | 265,080 | 178,776 |
| 16 | 3.1 | Review and determine the initial system specification and requirements of the system | manual | 2d | 2020-12-10 A | 2020-12-11 A | 13 | 100% |  | 2020-12-10 | 2020-12-11 | 2d |  | Senior AWS Cloud Architect | 16h | 16h | 3,200 | 3,200 | 3,200 |
| 17 | 3.2 | Develop functional requirements | manual | 2d | 2020-12-14 A | 2020-12-15 | 16 | 45% | 1.1d | 2020-12-14 | 2020-12-15 | 2d |  | SysOps Administrator | 16h | 7.2h | 1,280 | 1,280 | 576 |
| 18 | 3.3 | Perform risk assessment | manual | 4d | 2020-12-16 | 2020-12-21 | 17 |  |  | 2020-12-16 | 2020-12-21 | 4d |  | Senior AWS Cloud Architect | 32h |  | 6,400 | 6,400 |  |
| 19 | 3.4 | Design & produce prototype of the system | manual | 20d | 2020-12-22 | 2021-01-28 | 18 |  |  | 2020-12-22 | 2021-01-28 | 20d |  | Senior AWS Cloud Architect; Senior AWS Network Analyst; SysOps Administrator | 480h |  | 76,800 | 76,800 |  |
| 20 | 3.5 | Procure Design Approval | manual | 1d | 2021-01-29 | 2021-01-29 | 19 |  |  | 2021-01-29 | 2021-01-29 | 1d |  | Project Manager | 8h |  | 2,400 | 2,400 |  |
| 21 | 3.6 | System Planning & Design Complete | milestone, manual | 0d | 2021-01-29 | 2021-01-29 |  |  |  | 2021-01-29 | 2021-01-29 | 0d |  |  |  |  |  |  |  |
| 22 | 4 | **System Development** |  | 40d | 2021-02-01 | 2021-03-26 |  |  |  | 2021-02-01 | 2021-03-26 | 40d | 0d | Air Travel; Hardware; Software Big Data; Software Cloud; Software Email; Software Project Management | 2680h |  | 399,400 | 399,400 |  |
| 23 | 4.1 | Develop Database System |  | 20d | 2021-02-01 | 2021-02-26 | 20 |  |  | 2021-02-01 | 2021-02-26 | 20d | 10d | AWS Big Data Analyst | 160h |  | 12,800 | 12,800 |  |
| 24 | 4.2 | Develop Platform & Tools |  | 30d | 2021-02-01 | 2021-03-12 | 20 |  |  | 2021-02-01 | 2021-03-12 | 30d | 0d | Senior AWS Network Analyst; SysOps Administrator | 480h |  | 67,200 | 67,200 |  |
| 25 | 4.3 | Testing & Initial Debugging |  | 5d | 2021-03-15 | 2021-03-19 | 23, 24 |  |  | 2021-03-15 | 2021-03-19 | 5d | 0d | Senior AWS Cloud Architect | 40h |  | 8,000 | 8,000 |  |
| 26 | 4.4 | Document Metadata & Irregularities | manual | 5d | 2021-03-22 | 2021-03-26 | 25 |  |  | 2021-03-22 | 2021-03-26 | 5d |  | AWS Big Data Analyst; SysOps Administrator | 80h |  | 6,400 | 6,400 |  |
| 27 | 4.5 | System Development Complete | milestone, manual | 0d | 2021-03-26 | 2021-03-26 |  |  |  | 2021-03-26 | 2021-03-26 | 0d |  |  |  |  |  |  |  |

| ID | WBS | Task | Type | Duration | Start | Finish | Predecessors | Baseline start | Baseline finish | Baseline duration | Total slack | Resources | Work | Cost | Baseline cost |
| --- | --- | --- | --- | --- | --- | --- | --- | --- | --- | --- | --- | --- | --- | --- | --- |
| 28 | 5 | **Testing & Implementation** |  | 26d | 2021-03-29 | 2021-05-03 |  | 2021-03-29 | 2021-05-03 | 26d | 0d | Software Big Data; Software Cloud; Software Email | 992h | 193,640 | 193,640 |
| 29 | 5.1 | Functional Testing | manual | 4d | 2021-03-29 | 2021-04-01 | 26 | 2021-03-29 | 2021-04-01 | 4d |  | Senior AWS Cloud Architect | 32h | 6,400 | 6,400 |
| 30 | 5.2 | Performance Testing | manual | 2d | 2021-03-29 | 2021-03-30 | 26 | 2021-03-29 | 2021-03-30 | 2d |  | AWS Big Data Analyst; SysOps Administrator | 32h | 2,560 | 2,560 |
| 31 | 5.3 | Stress Testing | manual | 3d | 2021-03-29 | 2021-03-31 | 26 | 2021-03-29 | 2021-03-31 | 3d |  | Senior AWS Network Analyst | 24h | 4,800 | 4,800 |
| 32 | 5.4 | Storage Testing | manual | 1d | 2021-04-02 | 2021-04-02 | 31, 29, 30 | 2021-04-02 | 2021-04-02 | 1d |  | AWS Big Data Analyst | 8h | 640 | 640 |
| 33 | 5.5 | Operability Testing | manual | 5d | 2021-04-02 | 2021-04-08 | 29, 30, 31 | 2021-04-02 | 2021-04-08 | 5d |  | SysOps Administrator | 40h | 3,200 | 3,200 |
| 34 | 5.6 | Throughput Testing | manual | 3d | 2021-04-09 | 2021-04-13 | 33, 32 | 2021-04-09 | 2021-04-13 | 3d |  | AWS Big Data Analyst | 24h | 1,920 | 1,920 |
| 35 | 5.7 | Failure mode testing | manual | 5d | 2021-04-14 | 2021-04-20 | 34 | 2021-04-14 | 2021-04-20 | 5d |  | SysOps Administrator | 40h | 3,200 | 3,200 |
| 36 | 5.8 | Identify irregularities/inconsistencies (bugs) | manual | 4d | 2021-04-21 | 2021-04-26 | 35 | 2021-04-21 | 2021-04-26 | 4d |  | AWS Big Data Analyst; Senior AWS Cloud Architect; SysOps Administrator | 96h | 11,520 | 11,520 |
| 37 | 5.9 | Document & Fix irregularities/inconsistencies (bugs) | manual | 9d | 2021-04-21 | 2021-05-03 | 35 | 2021-04-21 | 2021-05-03 | 9d |  | Senior AWS Network Analyst | 72h | 14,400 | 14,400 |
| 38 | 5.10 | Testing & Implementation Complete | milestone, manual | 0d | 2021-05-03 | 2021-05-03 |  | 2021-05-03 | 2021-05-03 | 0d |  |  |  |  |  |
| 39 | 6 | **System Deployment** |  | 43d | 2021-05-04 | 2021-07-01 |  | 2021-05-04 | 2021-07-01 | 43d | 0d | Software Big Data; Software Cloud; Software Project Management | 1736h | 272,920 | 272,920 |
| 40 | 6.1 | Integrate system into the firm's operation platform | manual | 9d | 2021-05-04 | 2021-05-14 | 37, 36 | 2021-05-04 | 2021-05-14 | 9d |  | Senior AWS Cloud Architect; Senior AWS Network Analyst; SysOps Administrator | 216h | 34,560 | 34,560 |
| 41 | 6.2 | Develop user manuals | manual | 12d | 2021-05-17 | 2021-06-01 | 40 | 2021-05-17 | 2021-06-01 | 12d |  | AWS Big Data Analyst; SysOps Administrator | 192h | 15,360 | 15,360 |
| 42 | 6.3 | Train end-users | manual | 5d | 2021-05-17 | 2021-05-21 | 40 | 2021-05-17 | 2021-05-21 | 5d |  | Senior AWS Cloud Architect | 40h | 8,000 | 8,000 |
| 43 | 6.4 | Deploy analytical system | manual | 10d | 2021-06-02 | 2021-06-15 | 42, 41 | 2021-06-02 | 2021-06-15 | 10d |  | Project Manager; Senior AWS Cloud Architect | 160h | 40,000 | 40,000 |
| 44 | 6.5 | Document challenges encountered | manual | 5d | 2021-06-16 | 2021-06-22 | 43 | 2021-06-16 | 2021-06-22 | 5d |  | SysOps Administrator | 40h | 3,200 | 3,200 |
| 45 | 6.6 | Organize system maintenance team | manual | 2d | 2021-06-23 | 2021-06-24 | 44 | 2021-06-23 | 2021-06-24 | 2d |  | Project Manager | 16h | 4,800 | 4,800 |
| 46 | 6.7 | Complete Final Report | manual | 5d | 2021-06-25 | 2021-07-01 | 45 | 2021-06-25 | 2021-07-01 | 5d |  | Project Manager | 40h | 12,000 | 12,000 |
| 47 | 6.8 | System Deployment Complete | milestone, manual | 0d | 2021-07-01 | 2021-07-01 |  | 2021-07-01 | 2021-07-01 | 0d |  |  |  |  |  |
